# Product #23 Development

Schedule from MS Project, 2001-01-01 to 2001-05-23, costs in $.
New Product
Project shelved due to test marketing results

## Calendars

- Standard: Mon-Fri 08:00-12:00, 13:00-17:00; Sat-Sun off.

## Resources

| Resource | Group | Rate | Cost per use |
| --- | --- | --- | --- |
| Scott Adams | Production | 8 |  |
| Mary Logan | Production | 10 |  |
| Howard Thompson | Sales | 22.5 | 1000 |
| Mel Lloyd | Shipping | 15 |  |
| Jenny Benson | Personnel | 35 |  |
| Assemblers | Assembly | 8.5 |  |
| Bill Kirk | Design | 16.83 |  |
| John Melville | Finance | 14.42 |  |

## Schedule

| ID | WBS | Task | Type | Duration | Start | Finish | Predecessors | Total slack | Free slack | Resources | Work | Cost | Text1 |
| --- | --- | --- | --- | --- | --- | --- | --- | --- | --- | --- | --- | --- | --- |
| 1 | 1 | Begin project | milestone | 0d | 2001-01-01 | 2001-01-01 |  | 103d |  |  |  |  |  |
| 2 | 2 | **Design Phase** |  | 45d | 2001-01-01 | 2001-03-02 |  | 0d |  |  | 620h | 8,137.69 |  |
| 3 | 2.1 | Prototype design |  | 25d | 2001-01-01 | 2001-02-02 |  | 0d |  | Bill Kirk; Scott Adams [50%] | 300h | 4,165.38 |  |
| 4 | 2.2 | Test prototype |  | 20d | 2001-02-05 | 2001-03-02 | 3 | 0d |  | Bill Kirk; Scott Adams | 320h | 3,972.31 | 123-09 |
| 5 | 2.3 | Prototype completed | milestone | 0d | 2001-03-02 | 2001-03-02 | 4 | 0d |  |  |  |  |  |
| 6 | 3 | **Finance Phase** |  | 45d | 2001-01-01 | 2001-03-02 |  | 28d | 0d |  | 360h | 5,192.31 |  |
| 7 | 3.1 | Create business plan |  | 3w | 2001-01-01 | 2001-01-19 |  | 28d | 0d | John Melville | 120h | 1,730.77 |  |
| 8 | 3.2 | Present to current investors | milestone | 0d | 2001-01-19 | 2001-01-19 | 7 | 28d | 0d | John Melville |  |  |  |
| 9 | 3.3 | Meet with bankers | milestone | 0d | 2001-01-19 | 2001-01-19 | 8 | 58d |  | John Melville |  |  |  |
| 10 | 3.4 | Circulate plan w/ venture capitalists |  | 5d | 2001-01-22 | 2001-01-26 | 8 | 28d | 0d | John Melville | 40h | 576.92 |  |
| 11 | 3.5 | Negotiate with venture capitalists |  | 2w | 2001-01-29 | 2001-02-09 | 10 | 28d | 0d | John Melville | 80h | 1,153.85 |  |
| 12 | 3.6 | Reach agreement | milestone | 0d | 2001-02-09 | 2001-02-09 | 11 | 28d | 0d |  |  |  |  |
| 13 | 3.7 | Create legal documentation |  | 3w | 2001-02-12 | 2001-03-02 | 12 | 28d | 0d | John Melville | 120h | 1,730.77 |  |
| 14 | 3.8 | Financing closed | milestone | 0d | 2001-03-02 | 2001-03-02 | 13 | 28d |  |  |  |  |  |
| 15 | 2 | **Production Phase** |  | 73d | 2001-01-15 | 2001-04-25 |  | 0d |  |  | 704h | 6,390.15 |  |
| 16 | 2.1 | Setup assembly line |  | 15d | 2001-03-05 | 2001-03-23 | 5 | 0d |  | Scott Adams | 120h | 960 | 12-657 |
| 17 | 2.2 | Hire assemblers |  | 50d | 2001-01-15 | 2001-03-23 | 16FF | 0d |  | Scott Adams | 400h | 3,200 | 12-554 |
| 18 | 2.3 | Assemble first batch |  | 3d | 2001-03-26 | 2001-03-28 | 5, 16, 17 | 0d |  | Assemblers | 24h | 204 | 43-291 |
| 19 | 4.4 | Quality testing |  | 2w | 2001-03-29 | 2001-04-11 | 18 | 0d |  | Bill Kirk | 80h | 1,346.15 |  |
| 20 | 4.5 | Assemble product |  | 2w | 2001-04-12 | 2001-04-25 | 19 | 0d |  | Assemblers | 80h | 680 |  |
| 21 | 2.4 | Inventory available | milestone | 0d | 2001-04-25 | 2001-04-25 | 20 | 0d |  |  |  |  |  |
| 22 | 5 | **Marketing and Sales Phase** |  | 30d | 2001-03-05 | 2001-04-13 | 6 | 28d |  |  | 600h | 18,500 |  |
| 23 | 5.1 | Develop marketing plan |  | 1w | 2001-03-05 | 2001-03-09 |  | 28d | 0d | Howard Thompson | 40h | 1,900 |  |
| 24 | 5.2 | Create sales materials |  | 5w | 2001-03-12 | 2001-04-13 | 23 | 28d | 0d | Howard Thompson | 200h | 5,500 |  |
| 25 | 5.3 | Create advertising plan |  | 3w | 2001-03-12 | 2001-03-30 | 23 | 38d |  | Howard Thompson | 120h | 3,700 |  |
| 26 | 5.4 | Develop PR plan |  | 15d | 2001-03-12 | 2001-03-30 | 23 | 38d |  | Howard Thompson | 120h | 3,700 |  |
| 27 | 5.5 | Sales training |  | 3w | 2001-03-26 | 2001-04-13 | 24FS-15d | 28d | 0d | Howard Thompson | 120h | 3,700 |  |
| 28 | 5.6 | Start sales program | milestone | 0d | 2001-04-13 | 2001-04-13 | 27 | 28d |  |  |  |  |  |

| ID | WBS | Task | Type | Duration | Start | Finish | Predecessors | Total slack | Free slack | Resources | Work | Cost | Text1 |
| --- | --- | --- | --- | --- | --- | --- | --- | --- | --- | --- | --- | --- | --- |
| 29 | 3 | **Distribution Phase** |  | 16d | 2001-04-26 | 2001-05-17 | 15 | 4d |  |  | 168h | 1,848 |  |
| 30 | 3.1 | Stock warehouse |  | 7d | 2001-04-26 | 2001-05-04 |  | 4d | 0d | Scott Adams | 56h | 448 |  |
| 31 | 3.2 | Process orders |  | 1w | 2001-05-07 | 2001-05-11 | 30 | 8d |  | Scott Adams | 40h | 320 | 12-098 |
| 32 | 3.3 | Organize shipments |  | 5d | 2001-05-07 | 2001-05-11 | 30 | 4d | 0d | Mel Lloyd | 40h | 600 | 12-098 |
| 33 | 3.4 | Load trucks |  | 4d | 2001-05-14 | 2001-05-17 | 32 | 4d | 0d | Mel Lloyd | 32h | 480 | 12-098 |
| 34 | 3.5 | First shipment | milestone | 0d | 2001-05-17 | 2001-05-17 | 21, 33 | 4d |  |  |  |  |  |
| 35 | 4 | **Regional Promotions** |  | 20d | 2001-04-25 | 2001-05-23 | 15 | 0d |  |  | 160h | 7,600 |  |
| 36 | 7.1 | PR announcement event | milestone | 0d | 2001-04-25 | 2001-04-25 |  | 0d |  |  |  |  |  |
| 37 | 7.2 | Begin advertising campaign | milestone | 0d | 2001-04-25 | 2001-04-25 | 36 | 0d |  |  |  |  |  |
| 38 | 4.1 | West Coast promo week |  | 5d | 2001-04-26 | 2001-05-02 | 37 | 0d |  | Howard Thompson | 40h | 1,900 | 19-021 |
| 39 | 4.2 | East Coast promo week |  | 5d | 2001-05-03 | 2001-05-09 | 38 | 0d |  | Howard Thompson | 40h | 1,900 | 19-021 |
| 40 | 4.3 | Northern Region promo week |  | 5d | 2001-05-10 | 2001-05-16 | 39 | 0d |  | Howard Thompson | 40h | 1,900 | 19-021 |
| 41 | 4.4 | Southern Region promo week |  | 5d | 2001-05-17 | 2001-05-23 | 40 | 0d |  | Howard Thompson | 40h | 1,900 | 19-021 |
| 42 | 4.5 | End project | milestone | 0w | 2001-05-23 | 2001-05-23 | 31, 41 | 0d |  |  |  |  | 19-021 |
